# Terminal Building 2

Schedule from Primavera P6, 2012-05-01 to 2013-02-27, data date 2012-05-01.
Must finish by 2013-03-01

## Calendars

- 7-Day Workweek(TENDER CALENDAR): Mon-Sun 08:00-12:00, 13:00-17:00.

## Resources

| Resource | Group | Unit |
| --- | --- | --- |
| Excavation | material |  |
| Plain Concrete Quantities | material | M3 |
| Reinforced Concrete Quantities | material | M3 |
| PC For SOG | material | M3 |
| Borrowed Backfilling quantities | material | M3 |
| Hollow Core Slab | material | m2 |

## Schedule

| ID | WBS | Activity | Type | Duration | Start | Finish | Predecessors | Total float | Free float | Constraint | Resources | Classification |
| --- | --- | --- | --- | --- | --- | --- | --- | --- | --- | --- | --- | --- |
|  | 1 | **Project Start** |  |  | 2012-05-01 | 2012-05-01 |  |  |  |  |  |  |
| A1010 |  | Project Start | milestone | 0d | 2012-05-01 | 2012-05-01 |  | 0d |  | start on or before 2012-05-01 |  |  |
|  | 2 | **Building A** |  |  | 2012-05-01 | 2013-02-27 |  |  |  |  |  |  |
|  | 4 | **Part 1** |  |  | 2012-05-01 | 2012-12-19 |  |  |  |  |  |  |
|  | 1 | **Foundations (-1.4)** |  |  | 2012-05-01 | 2012-07-22 |  |  |  |  |  |  |
| BA-P1-10 |  | Excavation till Level (-1.4) |  | 23d | 2012-05-01 | 2012-05-23 | A1010 | 1d | 0d |  | Excavation [20547] | Excavation |
| BA-P1-10 |  | DEMO: Duplicate activity row |  | 23d | 2012-05-01 | 2012-05-23 | A1010 | 1d | 0d |  | Excavation [20547] | Excavation |
| BA-P1-30 |  | Piles Work |  | 20d | 2012-05-24 | 2012-06-12 | BA-P1-10 | 0d |  |  |  | Piles |
| BA-P1-40 |  | P.C For Footings |  | 25d | 2012-06-03 | 2012-06-27 | BA-P1-30 SS+10d | -1d | 0d |  | Plain Concrete Quantities [1823.5 M3] | P.C For Footings |
| BA-P1-50 |  | R.C For Footings |  | 40d | 2012-06-13 | 2012-07-22 | BA-P1-40 SS+10d | 1d | 0d |  | Reinforced Concrete Quantities [408.1 M3] | R.C For Footings |
| DEMO-BROKEN |  | DEMO: Malformed activity row |  | 40d | 2012-06-13 | 2012-07-22 |  | 1d | 0d |  |  |  |
|  | 3 | **Foundations (+3)** |  |  | 2012-05-01 | 2012-10-05 |  |  |  |  |  |  |
| BA-P1-20 |  | Excavation till Level (+3) |  | 30d | 2012-05-01 | 2012-05-30 |  | 2d | 0d |  | Excavation [20547] | Excavation |
| BA-P1-90 |  | P.C For Footings |  | 25d | 2012-09-01 | 2012-09-25 | BA-P1-80 SS+5d, BA-P1-40 SS+5d | 1d | 0d |  | Plain Concrete Quantities [1823.5 M3] | P.C For Footings |
| BA-P1-100 |  | R.C For Footings |  | 25d | 2012-09-11 | 2012-10-05 | BA-P1-90 SS+10d | 1d | 0d |  | Reinforced Concrete Quantities [408.1 M3] | R.C For Footings |
|  | 4 | **Backfill And Insulation** |  |  | 2012-08-12 | 2012-10-20 |  |  |  |  |  |  |
| BA-P1-70 |  | Insulation Works For R.C Footings (-1.4) |  | 15d | 2012-08-12 | 2012-08-26 | BA-P1-60 | 1d | 0d |  |  | Insulation Works |
| BA-P1-80 |  | Backfill Works Till (+3) |  | 20d | 2012-08-27 | 2012-09-15 | BA-P1-70 | 1d | 0d |  | Borrowed Backfilling quantities [18438 M3] | Backfill Works |
| BA-P1-120 |  | Insulation Works For R.C Footings (+3) |  | 5d | 2012-10-11 | 2012-10-15 | BA-P1-110 | 1d | 0d |  |  | Insulation Works |
| BA-P1-130 |  | Final Backfill Works |  | 5d | 2012-10-16 | 2012-10-20 | BA-P1-120 | 1d | 0d |  | Borrowed Backfilling quantities [8000 M3] | Backfill Works |
|  | 2 | **First Basement Floor** |  |  | 2012-07-23 | 2012-12-19 |  |  |  |  |  |  |
| BA-P1-60 |  | Columns And Retaining Wall |  | 20d | 2012-07-23 | 2012-08-11 | BA-P1-50 | 1d | 0d |  | Reinforced Concrete Quantities [420.05 M3] | Columns |
| BA-P1-110 |  | Columns |  | 20d | 2012-09-21 | 2012-10-10 | BA-P1-100 SS+10d | 1d | 0d |  | Reinforced Concrete Quantities [420.05 M3] | Columns |
| BA-P1-140 |  | Hollow Core Slab Works |  | 25d | 2012-10-21 | 2012-11-14 | BA-P1-130 | 68d | 0d |  | Hollow Core Slab [1926 m2]; Reinforced Concrete Quantities [96 M3] |  |
| BA-P1-150 |  | LB Beams Works |  | 25d | 2012-10-21 | 2012-11-14 | BA-P1-140 SS | 86d | 15d |  | Reinforced Concrete Quantities [2028 M3] |  |
| BA-P1-160 |  | P.C SOG |  | 15d | 2012-11-30 | 2012-12-14 | BA-P1-140 FS+15d, BA-P1-130 FS+15d, BA-P1-150 | 71d | 0d |  | PC For SOG [1598 M3] | Slab On Grade |
| BA-P1-170 |  | R.C SOG |  | 15d | 2012-12-05 | 2012-12-19 | BA-P1-160 SS+5d | 71d | 70d |  | Reinforced Concrete Quantities [970.3 M3] |  |

| ID | WBS | Activity | Duration | Start | Finish | Predecessors | Total float | Free float | Resources | Classification |
| --- | --- | --- | --- | --- | --- | --- | --- | --- | --- | --- |
|  | 5 | **Part 2** |  | 2012-05-24 | 2013-02-27 |  |  |  |  |  |
|  | 1 | **Foundations** |  | 2012-05-24 | 2012-10-30 |  |  |  |  |  |
| BA-P2-10 |  | Excavation till Level (-1.4) | 30d | 2012-05-24 | 2012-06-22 | BA-P1-10 | 1d | 0d | Excavation [47192] | Excavation |
| BA-P2-20 |  | Piles Work | 40d | 2012-06-23 | 2012-08-01 | BA-P2-10 | 26d | 0d |  | Piles |
| BA-P2-30 |  | P.C For Footings | 20d | 2012-08-02 | 2012-08-21 | BA-P2-20 | 26d | 0d | Plain Concrete Quantities [4588.35 M3] | P.C For Footings |
| BA-P2-40 |  | R.C For Footings | 20d | 2012-08-12 | 2012-08-31 | BA-P2-30 SS+10d | 26d | 0d | Reinforced Concrete Quantities [954.7 M3] | R.C For Footings |
| BA-P2-60 |  | Insulation Works | 10d | 2012-09-16 | 2012-09-25 | BA-P2-50 | 26d | 25d |  | Insulation Works |
| BA-P2-70 |  | Backfill Works | 10d | 2012-10-21 | 2012-10-30 | BA-P2-60, BA-P1-130 | 1d | 0d | Borrowed Backfilling quantities [21173 M3] | Backfill Works |
|  | 2 | **Second Basement Floor** |  | 2012-09-01 | 2012-12-31 |  |  |  |  |  |
| BA-P2-50 |  | Columns And Retaining Wall | 15d | 2012-09-01 | 2012-09-15 | BA-P2-40 | 26d | 0d | Reinforced Concrete Quantities [325.2 M3] | Columns |
| BA-P2-80 |  | RC Deck Floor | 15d | 2012-11-10 | 2012-11-24 | BA-P2-70 FS+10d | 1d | 0d | Reinforced Concrete Quantities [752.4 M3] | Slab |
| BA-P2-100 |  | P.C SOG | 15d | 2012-12-10 | 2012-12-24 | BA-P2-80 FS+15d | 59d | 0d | PC For SOG [1270 M3] | Slab On Grade |
| BA-P2-110 |  | R.C SOG | 15d | 2012-12-17 | 2012-12-31 | BA-P2-100 SS+7d | 59d | 58d | Reinforced Concrete Quantities [1220.7 M3] |  |
|  | 3 | **First Basement Floor** |  | 2012-11-25 | 2013-01-23 |  |  |  |  |  |
| BA-P2-90 |  | Columns And Retaining Wall | 25d | 2012-11-25 | 2012-12-19 | BA-P2-80 | 1d | 0d | Reinforced Concrete Quantities [325.2 M3] | Columns |
| BA-P2-120 |  | Hollow Core Slab | 35d | 2012-12-20 | 2013-01-23 | BA-P2-90 | 1d | 0d | Hollow Core Slab [2915 m2]; Reinforced Concrete Quantities [146 M3] |  |
| BA-P2-130 |  | LB Beams Works | 30d | 2012-12-20 | 2013-01-18 | BA-P2-120 SS | 6d | 5d | Reinforced Concrete Quantities [2028 M3] |  |
|  | 4 | **Ground Floor** |  | 2013-01-24 | 2013-02-27 |  |  |  |  |  |
| BA-P2-140 |  | Columns | 15d | 2013-01-24 | 2013-02-07 | BA-P2-120, BA-P1-140 FS+3d, BA-P1-130 FS+3d, BA-P2-90 FS+5d, BA-P2-130 | 1d | 0d | Reinforced Concrete Quantities [325.2 M3] | Columns |
| BA-P2-150 |  | Hollow Core Slab | 20d | 2013-02-08 | 2013-02-27 | BA-P2-140 | 1d | 0d | Hollow Core Slab [1053 m2]; Reinforced Concrete Quantities [52.6 M3] |  |
|  | 1 | **Part 3** |  | 2012-05-31 | 2013-02-26 |  |  |  |  |  |
|  | 1 | **Foundations & SOG Works** |  | 2012-05-31 | 2012-10-09 |  |  |  |  |  |
| BA-P3-10 |  | Excavation till Level (+3) | 30d | 2012-05-31 | 2012-06-29 | BA-P1-20 | 2d | 0d | Excavation [18982] | Excavation |
| BA-P3-20 |  | P.C For Footings | 15d | 2012-07-14 | 2012-07-28 | BA-P3-10 FS+14d | 2d | 0d | Plain Concrete Quantities [1647 M3] | P.C For Footings |
| BA-P3-30 |  | R.C For Footings | 18d | 2012-07-29 | 2012-08-15 | BA-P3-20 | 2d | 0d | Reinforced Concrete Quantities [373 M3] | R.C For Footings |
| BA-P3-50 |  | Insulation Works | 15d | 2012-09-10 | 2012-09-24 | BA-P3-40 | 2d | 0d |  | Insulation Works |
| BA-P3-60 |  | Backfill Works | 15d | 2012-09-25 | 2012-10-09 | BA-P3-50 | 2d | 0d | Borrowed Backfilling quantities [8517 M3] | Backfill Works |

| ID | WBS | Activity | Duration | Start | Finish | Predecessors | Total float | Free float | Resources | Classification |
| --- | --- | --- | --- | --- | --- | --- | --- | --- | --- | --- |
|  | 2 | **First Basement Floor** |  | 2012-08-16 | 2012-12-13 |  |  |  |  |  |
| BA-P3-40 |  | Columns And Retaining Wall | 25d | 2012-08-16 | 2012-09-09 | BA-P3-30 | 2d | 0d | Reinforced Concrete Quantities [135.5 M3] | Columns |
| BA-P3-70 |  | Slab Works | 30d | 2012-10-10 | 2012-11-08 | BA-P3-60 | 2d | 0d | Reinforced Concrete Quantities [560 M3] | Slab |
| BA-P3-80 |  | Hollow Core Slab | 20d | 2012-10-10 | 2012-10-29 | BA-P3-70 SS | 12d | 10d | Hollow Core Slab [1716 m2]; Reinforced Concrete Quantities [85.8 M3] |  |
| BA-P3-100 |  | P.C SOG | 15d | 2012-11-24 | 2012-12-08 | BA-P3-70 FS+15d, BA-P3-80 FS+15d | 77d | 0d | PC For SOG [456 M3] | Slab On Grade |
| BA-P3-110 |  | R.C SOG | 15d | 2012-11-29 | 2012-12-13 | BA-P3-100 SS+5d | 77d | 76d | Reinforced Concrete Quantities [438.2 M3] |  |
|  | 4 | **Ground Floor** |  | 2012-11-12 | 2013-01-02 |  |  |  |  |  |
| BA-P3-90 |  | Columns | 20d | 2012-11-12 | 2012-12-01 | BA-P3-70 FS+3d, BA-P3-80 FS+3d | 2d | 0d | Reinforced Concrete Quantities [135.5 M3] | Columns |
| BA-P3-120 |  | Slab Works | 30d | 2012-12-04 | 2013-01-02 | BA-P3-90 FS+2d | 2d | 0d | Reinforced Concrete Quantities [560 M3] | Slab |
|  | 3 | **First Floor** |  | 2013-01-06 | 2013-02-26 |  |  |  |  |  |
| BA-P3-130 |  | Columns | 20d | 2013-01-06 | 2013-01-25 | BA-P3-120 FS+3d | 2d | 0d | Reinforced Concrete Quantities [135.5 M3] | Columns |
| BA-P3-140 |  | Slab Works | 30d | 2013-01-28 | 2013-02-26 | BA-P3-130 FS+2d | 2d | 1d | Reinforced Concrete Quantities [560 M3] | Slab |
|  | 3 | **Part 4** |  | 2012-06-23 | 2013-02-27 |  |  |  |  |  |
|  | 1 | **Foundations** |  | 2012-06-23 | 2012-09-17 |  |  |  |  |  |
| BA-P4-10 |  | Excavation till Level (-1.4) | 20d | 2012-06-23 | 2012-07-12 | BA-P2-10 | 1d | 0d | Excavation [24232] | Excavation |
| BA-P4-20 |  | P.C For Footings | 15d | 2012-07-13 | 2012-07-27 | BA-P4-10 | 1d | 0d | Plain Concrete Quantities [1882.4 M3] | P.C For Footings |
| BA-P4-30 |  | R.C For Footings | 20d | 2012-07-23 | 2012-08-11 | BA-P4-20 SS+10d | 1d | 0d | Reinforced Concrete Quantities [456.1 M3] | R.C For Footings |
| BA-P4-50 |  | Insulation Works | 10d | 2012-08-27 | 2012-09-05 | BA-P4-40 | 1d | 0d |  | Insulation Works |
| BA-P4-60 |  | Backfill Works | 12d | 2012-09-06 | 2012-09-17 | BA-P4-50 | 1d | 0d | Borrowed Backfilling quantities [10872 M3] | Backfill Works |
|  | 2 | **Second Basement Floor** |  | 2012-08-12 | 2012-11-13 |  |  |  |  |  |
| BA-P4-40 |  | Columns And Retaining Wall | 15d | 2012-08-12 | 2012-08-26 | BA-P4-30 | 1d | 0d | Reinforced Concrete Quantities [121.95 M3] | Columns |
| BA-P4-70 |  | RC Deck Floor | 20d | 2012-09-18 | 2012-10-07 | BA-P4-60 | 1d | 0d | Reinforced Concrete Quantities [420 M3] | Slab |
| BA-P4-90 |  | P.C SOG | 15d | 2012-10-23 | 2012-11-06 | BA-P4-70 FS+15d | 107d | 0d | PC For SOG [521 M3] | Slab On Grade |
| BA-P4-120 |  | R.C SOG | 15d | 2012-10-30 | 2012-11-13 | BA-P4-90 SS+7d | 107d | 106d | Reinforced Concrete Quantities [500.8 M3] |  |

| ID | WBS | Activity | Type | Duration | Start | Finish | Predecessors | Total float | Free float | Resources | Classification |
| --- | --- | --- | --- | --- | --- | --- | --- | --- | --- | --- | --- |
|  | 3 | **First Basement Floor** |  |  | 2012-10-08 | 2012-12-11 |  |  |  |  |  |
| BA-P4-80 |  | Columns |  | 20d | 2012-10-08 | 2012-10-27 | BA-P4-70 | 1d | 0d | Reinforced Concrete Quantities [121.95 M3] | Columns |
| BA-P4-100 |  | Hollow Core Slab |  | 45d | 2012-10-28 | 2012-12-11 | BA-P4-110 SS | 1d | 0d | Hollow Core Slab [3030 m2]; Reinforced Concrete Quantities [151 M3] |  |
| BA-P4-110 |  | Slab Works |  | 25d | 2012-10-28 | 2012-11-21 | BA-P4-80 | 1d | 0d | Reinforced Concrete Quantities [615 M3] |  |
|  | 4 | **Ground Floor** |  |  | 2012-12-12 | 2013-01-23 |  |  |  |  |  |
| BA-P4-130 |  | Columns |  | 18d | 2012-12-12 | 2012-12-29 | BA-P4-100, BA-P4-80, BA-P4-110 | 1d | 0d | Reinforced Concrete Quantities [121.95 M3] | Columns |
| BA-P4-140 |  | Slab Works |  | 25d | 2012-12-30 | 2013-01-23 | BA-P4-130 | 1d | 0d | Reinforced Concrete Quantities [654 M3] | Slab |
| BA-P4-150 |  | Hollow Core Slab |  | 15d | 2012-12-30 | 2013-01-13 | BA-P4-140 SS | 11d | 10d | Hollow Core Slab [783 m2]; Reinforced Concrete Quantities [39.81 M3] |  |
|  | 5 | **First Floor** |  |  | 2013-01-24 | 2013-02-27 |  |  |  |  |  |
| BA-P4-160 |  | Columns |  | 15d | 2013-01-24 | 2013-02-07 | BA-P4-140, BA-P4-150 | 1d | 0d | Reinforced Concrete Quantities [121.95 M3] | Columns |
| BA-P4-170 |  | Slab Works |  | 20d | 2013-02-08 | 2013-02-27 | BA-P4-160 | 1d | 0d | Reinforced Concrete Quantities [500 M3] | Slab |
|  | 6 | **Building A Finish** |  |  | 2013-02-27 | 2013-02-27 |  |  |  |  |  |
| A3450 |  | Building A Finish | milestone | 0d | 2013-02-27 | 2013-02-27 | BA-P4-170, BA-P3-140, BA-P1-170, BA-P2-110, BA-P3-110, BA-P4-120, BA-P2-150 | 1d | 0d |  | Demolishing Works |
|  | 7 | **Project End** |  |  | 2013-02-27 | 2013-02-27 |  |  |  |  |  |
| A5800 |  | Project End | milestone | 0d | 2013-02-27 | 2013-02-27 | A3450 | 1d | 0d |  |  |
